# Autos Utilitarios

Schedule from MS Project, 2019-12-06 to 2020-08-06.

## Calendars

- Standard: Mon-Fri 08:00-12:00, 13:00-17:00; Sat-Sun off.

## Resources

| Resource |
| --- |
| Arturo Ramirez |

## Schedule

| ID | WBS | Task | Type | Duration | Start | Finish | Predecessors | Total slack | Free slack |
| --- | --- | --- | --- | --- | --- | --- | --- | --- | --- |
| 1 | 1 | **Autos Utilitarios** |  | 174.25d? | 2019-12-06 | 2020-08-06 |  | -23.38d | 0d |
| 2 | 1.1 | **DEFINICIÓN DE REQUERIMIENTOS** |  | 6.25d? | 2019-12-06 | 2019-12-16 |  | -23.38d | 0d |
| 3 | 1.1.1 | **Lista de Requerimientos** |  | 4.5d? | 2019-12-06 | 2019-12-12 |  | -23.38d | 0d |
| 4 | 1.1.1.1 | **RF001 Autos Utilitarios** |  | 1d? | 2019-12-06 | 2019-12-06 |  | -23.38d | 0d |
| 5 | 1.1.1.1.1 | RF001-CU001 BD Autos Utilitarios |  | 4h? | 2019-12-06 | 2019-12-06 |  | -23.38d | 0d |
| 6 | 1.1.1.1.2 | RF001-CU002 Responsiva Autos Utilitarios |  | 4h? | 2019-12-06 | 2019-12-06 | 5 | -23.38d | 0d |
| 7 | 1.1.1.2 | **RF002 Estadistica** |  | 2.5d? | 2019-12-09 | 2019-12-11 | 6 | -23.38d | 0d |
| 8 | 1.1.1.2.1 | RF002-CU001 Estadistica Gasolina |  | 4h? | 2019-12-09 | 2019-12-09 | 4 | -23.38d | 0d |
| 9 | 1.1.1.2.2 | RF002-CU002 Estadistica GPS |  | 4h? | 2019-12-09 | 2019-12-09 | 8 | -23.38d | 0d |
| 10 | 1.1.1.2.3 | RF002-CU003 Estadistica Mantenimiento |  | 4h? | 2019-12-10 | 2019-12-10 | 9 | -23.38d | 0d |
| 11 | 1.1.1.2.4 | RF002-CU004 Estadistica Peaje |  | 4h? | 2019-12-10 | 2019-12-10 | 10 | -23.38d | 0d |
| 12 | 1.1.1.2.5 | RF002-CU005 Estadistica Siniestralidad |  | 4h? | 2019-12-11 | 2019-12-11 | 11 | -23.38d | 0d |
| 13 | 1.1.1.3 | RNF001 Repositorio de Insumos |  | 4h? | 2019-12-11 | 2019-12-11 | 7 | -23.38d | 0d |
| 14 | 1.1.1.4 | RNF002 Depuración de campos |  | 4h? | 2019-12-12 | 2019-12-12 | 13 | -23.38d | 0d |
| 15 | 1.1.2 | Peer review Lista de Requerimientos |  | 8h? | 2019-12-12 | 2019-12-13 | 14 | -23.38d | 0d |
| 16 | 1.1.3 | VoBo Usuario de Lista de Requerimientos |  | 2h? | 2019-12-13 | 2019-12-13 | 15 | -23.38d | 0d |
| 17 | 1.1.4 | Matriz de trazabilidad |  | 4h? | 2019-12-13 | 2019-12-16 | 16 | -23.38d | 0d |
| 18 | 1.2 | **PLANEACIÓN** |  | 6.25d? | 2019-12-16 | 2019-12-24 | 2 | -23.38d | 0d |
| 19 | 1.2.1 | Cronograma |  | 16h? | 2019-12-16 | 2019-12-18 | 2 | -23.38d | 0d |
| 20 | 1.2.2 | Plan Integral Proyecto | manual | 24h? | 2019-12-18 | 2019-12-23 | 19 |  |  |
| 21 | 1.2.3 | Peer review Cronograma |  | 8h? | 2019-12-23 | 2019-12-24 | 20 | -27.62d | 0d |
| 22 | 1.2.4 | VoBo del Cronograma |  | 2h? | 2019-12-24 | 2019-12-24 | 21 | -27.62d | 0d |
| 23 | 1.3 | **ANÁLISIS FUNCIONAL** |  | 29.25d? | 2019-12-24 | 2020-02-03 | 18 | -27.62d | 0d |
| 24 | 1.3.1 | **Especificación Funcional** |  | 17d? | 2019-12-24 | 2020-01-16 | 18 | -27.62d | 0d |
| 25 | 1.3.1.1 | **RF001 Autos Utilitarios** |  | 4d? | 2019-12-24 | 2019-12-30 | 18 | -27.62d | 0d |
| 26 | 1.3.1.1.1 | RF001-CU001 BD Autos Utilitarios |  | 24h? | 2019-12-24 | 2019-12-27 | 18 | -27.62d | 0d |
| 27 | 1.3.1.1.2 | RF001-CU002 Responsiva Autos Utilitarios |  | 8h? | 2019-12-27 | 2019-12-30 | 26 | -27.62d | 0d |

| ID | WBS | Task | Duration | Start | Finish | Predecessors | Total slack | Free slack |
| --- | --- | --- | --- | --- | --- | --- | --- | --- |
| 28 | 1.3.1.2 | **RF002 Estadistica** | 12d? | 2019-12-30 | 2020-01-15 | 25 | -27.62d | 0d |
| 29 | 1.3.1.2.1 | RF002-CU001 Estadistica Gasolina | 24h? | 2019-12-30 | 2020-01-02 | 25 | -27.62d | 0d |
| 30 | 1.3.1.2.2 | RF002-CU002 Estadistica GPS | 24h? | 2020-01-02 | 2020-01-07 | 29 | -27.62d | 0d |
| 31 | 1.3.1.2.3 | RF002-CU003 Estadistica Mantenimiento | 16h? | 2020-01-07 | 2020-01-09 | 30 | -27.62d | 0d |
| 32 | 1.3.1.2.4 | RF002-CU004 Estadistica Peaje | 16h? | 2020-01-09 | 2020-01-13 | 31 | -27.62d | 0d |
| 33 | 1.3.1.2.5 | RF002-CU005 Estadistica Siniestralidad | 16h? | 2020-01-13 | 2020-01-15 | 32 | -27.62d | 0d |
| 34 | 1.3.1.3 | RNF001 Repositorio de Insumos | 4h? | 2020-01-15 | 2020-01-15 | 28 | -27.62d | 0d |
| 35 | 1.3.1.4 | RNF002 Depuración de campos | 4h? | 2020-01-16 | 2020-01-16 | 34 | -27.62d | 0d |
| 36 | 1.3.2 | **Boceto de Pantallas** | 5d? | 2020-01-16 | 2020-01-23 | 24 | -27.62d | 0d |
| 37 | 1.3.2.1 | RF002-CU001 Estadistica Gasolina | 12h? | 2020-01-16 | 2020-01-17 |  | -27.62d | 0d |
| 38 | 1.3.2.2 | RF002-CU002 Estadistica GPS | 12h? | 2020-01-20 | 2020-01-21 | 37 | -27.62d | 0d |
| 39 | 1.3.2.3 | RF002-CU003 Estadistica Mantenimiento | 6h? | 2020-01-21 | 2020-01-22 | 38 | -27.62d | 0d |
| 40 | 1.3.2.4 | RF002-CU004 Estadistica Peaje | 5h? | 2020-01-22 | 2020-01-22 | 39 | -27.62d | 0d |
| 41 | 1.3.2.5 | RF002-CU005 Estadistica Siniestralidad | 5h? | 2020-01-22 | 2020-01-23 | 40 | -27.62d | 0d |
| 42 | 1.3.3 | **Boceto de Reportes** | 3d? | 2020-01-23 | 2020-01-28 | 41 | -27.62d | 0d |
| 43 | 1.3.3.1 | RF001-CU002 Responsiva Autos Utilitarios | 24h? | 2020-01-23 | 2020-01-28 |  | -27.62d | 0d |
| 44 | 1.3.4 | Peer Review Análisis Funcional | 16h? | 2020-01-28 | 2020-01-30 | 43 | -27.62d | 0d |
| 45 | 1.3.5 | VoBo Análisis Funcional | 2h? | 2020-01-30 | 2020-01-30 | 44 | -27.62d | 0d |
| 46 | 1.3.6 | Matriz de Trazabilidad | 16h? | 2020-01-30 | 2020-02-03 | 45 | -27.62d | 0d |
| 47 | 1.4 | **DISEÑO** | 31.25d? | 2020-02-03 | 2020-03-17 | 23 | -27.62d | 0d |
| 48 | 1.4.1 | Elementos Impactados | 16h? | 2020-02-03 | 2020-02-05 | 23 | -27.62d | 0d |
| 49 | 1.4.2 | Diseño Detallado | 120h? | 2020-02-05 | 2020-02-26 | 48 | -27.62d | 0d |
| 50 | 1.4.3 | Modelo de Base de Datos | 40h? | 2020-02-26 | 2020-03-04 | 49 | -27.62d | 0d |
| 51 | 1.4.4 | Diseño de Interfaces | 40h? | 2020-03-04 | 2020-03-11 | 50 | -27.62d | 0d |
| 52 | 1.4.5 | Peer review Diseño | 16h? | 2020-03-11 | 2020-03-13 | 51 | -27.62d | 0d |
| 53 | 1.4.6 | VoBo Diseño | 2h? | 2020-03-13 | 2020-03-13 | 52 | -27.62d | 0d |
| 54 | 1.4.7 | Matriz de Trazabilidad | 16h? | 2020-03-16 | 2020-03-17 | 53 | -27.62d | 0d |

| ID | WBS | Task | Type | Duration | Start | Finish | Predecessors | Total slack | Free slack |
| --- | --- | --- | --- | --- | --- | --- | --- | --- | --- |
| 55 | 1.5 | **CONSTRUCCIÓN** |  | 33.75d? | 2020-03-18 | 2020-05-04 | 47 | -27.62d | 0d |
| 56 | 1.5.1 | Ambientación |  | 24h? | 2020-03-18 | 2020-03-20 | 47 | -27.62d | 0d |
| 57 | 1.5.2 | Código Fuente |  | 160h? | 2020-03-23 | 2020-04-17 | 56 | -27.62d | 0d |
| 58 | 1.5.3 | Evidencia de Pruebas Unitarias |  | 40h? | 2020-04-20 | 2020-04-24 | 57 | -27.62d | 0d |
| 59 | 1.5.4 | Plan de instalación |  | 16h? | 2020-04-27 | 2020-04-28 | 58 | -27.62d | 0d |
| 60 | 1.5.5 | Peer Review Construcción |  | 16h? | 2020-04-29 | 2020-04-30 | 59 | -27.62d | 0d |
| 61 | 1.5.6 | VoBo Construcción |  | 2h? | 2020-05-01 | 2020-05-01 | 60 | -27.62d | 0d |
| 62 | 1.5.7 | Matriz de Trazabilidad |  | 12h? | 2020-05-01 | 2020-05-04 | 61 | -27.62d | 0d |
| 63 | 1.6 | **PRUEBAS** |  | 27.62d? | 2020-04-16 | 2020-05-25 | 55 | -15d | 0d |
| 64 | 1.6.1 | Matriz de Pruebas Integrales |  | 40h? | 2020-05-04 | 2020-05-11 | 55 | -27.62d | 0d |
| 65 | 1.6.2 | Generación de Insumos |  | 40h? | 2020-05-11 | 2020-05-18 | 64 | -27.62d | 0d |
| 66 | 1.6.3 | **Ciclo de Pruebas 1** |  | 27.62d? | 2020-04-16 | 2020-05-25 | 65 | -24.12d | 0d |
| 67 | 1.6.3.1 | Evidencia de Pruebas Integrales |  | 40h? | 2020-05-18 | 2020-05-25 | 65 | -27.62d | 0d |
| 68 | 1.6.3.2 | Control de Incidencias | manual | 24h? | 2020-04-16 | 2020-04-21 | 67 |  |  |
| 69 | 1.6.3.3 | Correcciones |  | 24h? | 2020-05-18 | 2020-05-21 | 68 | -22.12d | 0d |
| 70 | 1.6.4 | **Ciclo de Pruebas N** |  | 9d? | 2020-04-21 | 2020-05-04 | 66 | 0d |  |
| 71 | 1.6.4.1 | Evidencia de Pruebas Integrales | manual | 40h? | 2020-04-21 | 2020-04-28 | 66 |  |  |
| 72 | 1.6.4.2 | Control de Incidencias | manual | 24h? | 2020-04-28 | 2020-05-01 | 71 |  |  |
| 73 | 1.6.4.3 | Correcciones | manual | 24h? | 2020-04-29 | 2020-05-04 | 72 |  |  |
| 74 | 1.6.5 | Peer review Pruebas |  | 16h? | 2020-05-04 | 2020-05-06 | 70 | 10.75d | 0d |
| 75 | 1.6.6 | VoBo Pruebas |  | 2h? | 2020-05-06 | 2020-05-06 | 74 | 10.75d | 0d |
| 76 | 1.6.7 | Matriz de trazabilidad |  | 16h? | 2020-05-07 | 2020-05-08 | 75 | 10.75d |  |
| 77 | 1.7 | **IMPLEMENTACIÓN** |  | 6.25d? | 2020-05-25 | 2020-06-02 | 63 | 0d |  |
| 78 | 1.7.1 | Puesta a producción |  | 16h? | 2020-05-25 | 2020-05-27 | 63 | 0d |  |
| 79 | 1.7.2 | Validación Implementación Usuario |  | 16h? | 2020-05-27 | 2020-05-29 | 78 | 0d |  |
| 80 | 1.7.3 | VoBo Usuario |  | 2h? | 2020-05-29 | 2020-05-29 | 79 | 0d |  |
| 81 | 1.7.4 | Matriz de Trazabilidad |  | 16h? | 2020-06-01 | 2020-06-02 | 80 | 0d |  |

| ID | WBS | Task | Duration | Start | Finish | Predecessors | Total slack |
| --- | --- | --- | --- | --- | --- | --- | --- |
| 82 | 1.8 | **POST MORTEM** | 46.25d? | 2020-06-03 | 2020-08-06 | 77 | 0d |
| 83 | 1.8.1 | Manuales de usuario | 80h? | 2020-06-03 | 2020-06-16 | 77 | 0d |
| 84 | 1.8.2 | Transferencia de conocimiento | 40h? | 2020-06-17 | 2020-06-23 | 83 | 0d |
| 85 | 1.8.3 | Seguimiento/Garantía | 240h? | 2020-06-24 | 2020-08-04 | 84 | 0d |
| 86 | 1.8.4 | Terminación de periodo de Garantía y VoBo del Usuario | 8h? | 2020-08-05 | 2020-08-05 | 85 | 0d |
| 87 | 1.8.5 | Cierre del proyecto | 2h? | 2020-08-06 | 2020-08-06 | 86 | 0d |
| 89 | 1.9 | **REUNIONES** | 7.5d? | 2019-12-06 | 2019-12-17 |  | 166.75d |
| 90 | 1.9.1 | Seguimiento con el usuario | 40h? | 2019-12-06 | 2019-12-12 |  | 155.5d |
| 91 | 1.9.2 | Seguimiento con el equipo | 60h? | 2019-12-06 | 2019-12-17 |  | 153d |
| 92 | 1.10 | **SOLICITUDES DE CAMBIO** | 5d? | 2019-12-06 | 2019-12-12 |  | 169.25d |
| 93 | 1.10.1 | **Planeación** | 5d? | 2019-12-06 | 2019-12-12 |  | 169.25d |
| 94 | 1.10.1.1 | Ajuste a productos de trabajo (lista de req, estimación, cronograma, plan, matriz de trazabilidad) | 40h? | 2019-12-06 | 2019-12-12 |  | 155.5d |
| 95 | 1.10.2 | **Artefactos** | 5d? | 2019-12-06 | 2019-12-12 |  | 169.25d |
| 96 | 1.10.2.1 | Ajuste a artefactos (elementos de AF, DI y CO) | 40h? | 2019-12-06 | 2019-12-12 |  | 155.5d |
